"id","wbs","name","days","start","finish","critical","float","owner","after","exitEvidence"
"P0","1","01 - Current position and program decisions","25","2026-11-02T09:00","2026-12-04T17:00","true","-1","","",""
"START","1.1","Planning start - Rev0 complete; Rev1 schematic in review and layout underway","0","2026-11-02T09:00","2026-11-02T09:00","true","-1","Program lead","","Status supplied 2026-10-31. Historical completion dates and percent complete are unknown; this is a planning anchor, not the actual Rev0 completion date."
"SCOPE","1.2","Confirm US/Canada launch requirements and installation envelope","5","2026-11-02T09:00","2026-11-06T17:00","true","-1","Product / EE / ME","START","Approved requirements: intended install location; 12 V baseline versus 24 V requirement; temperature, humidity, ingress, acoustic, GNSS, antenna, vehicle mounting, safe behavior and operating/survival power envelope. US + Canada launch confirmed; other markets are later change-controlled scope."
"LABPLAN","1.3","Agree certification and qualification matrix with accredited lab","10","2026-11-09T09:00","2026-11-20T17:00","false","9","Compliance lead","SCOPE","Written US FCC / Canada ISED route, exact ESP32 and nRF module grants/integration conditions, antennas and gains, RF exposure/use distance and simultaneous transmit cases; host emissions, GNSS receive performance, cellular/operator and Bluetooth qualification scope. Evaluate safety/battery/shipping and vehicle approval applicability. Lab quote, sample counts, modes and slot strategy recorded. Agree which electrical, conducted RF, network/protocol and documentation results may be accepted from Rev2 in printed housings; identify enclosure-sensitive tests, representative T1 sample requirements and T2 delta/retest rules."
"SUPPLY","1.4","Select overseas build partners and reserve indicative capacity","10","2026-11-09T09:00","2026-11-20T17:00","false","9","Operations / sourcing","SCOPE","PCBA, mold/assembly and membrane/cable vendors shortlisted; quotes, Incoterms, import responsibility, tooling ownership, payment/release gates, English controlled drawings, weekly overlap meeting and change approval process. Lead times remain estimates until supplier commits. Confirm actual holidays/country."
"LOTPLAN","1.5","Approve sample allocation and destructive-test budgets","5","2026-11-23T09:00","2026-11-27T17:00","false","9","Program / quality","LABPLAN SUPPLY","Allocate serialized boards/housings by test; suggested Rev1 15 boards, Rev2 30 boards, T1 20 sets, T2 60 sets, PVT 100 units subject to lab needs, destructive tests, spares, budget and demand. Counts are proposals, not purchase authorizations. Allocate separate early Rev2 electrical/conducted test units, T1 chamber/RF units, destructive-test spares and retained reference samples so parallel tracks do not share unavailable hardware."
"SIMPILOT","1.6","Evaluate physical SIM / eUICC provider and roaming","15","2026-11-09T09:00","2026-11-27T17:00","false","37","Connectivity lead","SCOPE","Provider comparison covers US/Canada LTE-M/NB-IoT coverage, roaming/permanent roaming, PSM/eDRX, APN, activation, provisioning, supply/form factor, profile lifecycle, cost and operator approvals. Bench attach evidence and fallback physical SIM choice. Do not assume eSIM is merely a socket substitution."
"NTNEVAL","1.7","Evaluate nRF9151 satellite service and supported hardware/firmware","20","2026-11-09T09:00","2026-12-04T17:00","false","32","Connectivity / nRF firmware","SCOPE","Check actual nRF9151 build code, compatible NTN modem/NCS release, provider service/bands/coverage, antenna/sky view, TN/NTN transitions, SIM profile, power budget, test access and approval route. Record working eval evidence or remaining gaps; not yet a launch promise."
"G0","1.8","G0 - Requirements, test strategy and supplier assumptions accepted","0","2026-11-27T17:00","2026-11-27T17:00","false","37","Program lead","LABPLAN SUPPLY LOTPLAN","Requirements, launch markets, qualification plan, sample budget and accountable role assignments accepted. Named owners and capacity still to be assigned."
"P1","2","02 - Rev1 PCB and prototype housing release","25","2026-11-09T09:00","2026-12-11T17:00","true","-1","","",""
"SCHCLOSE","2.1","Close Rev1 schematic review and BOM metadata","7","2026-11-09T09:00","2026-11-17T17:00","false","2","Electrical lead","SCOPE","Resolve reviewer comments and R2-03 MPN/tolerance/voltage/dielectric metadata; regenerate correct dev/production variants, BOM and netlist; run Altium compiler/ERC; unresolved risks have written containment. Saved source, reviewed PDF and exports agree."
"POWERBOUND","2.2","Bound Rev1 input fault stresses before destructive testing","10","2026-11-09T09:00","2026-11-20T17:00","true","-1","Electrical / power","SCOPE","Declare reverse battery, jump start, crank, pulse/load dump and USB overlap envelopes. Close R2-04 reverse comparator-pin injection allowance and transient peak/terminal stresses, or implement safe changes/bench containment. Static simulation alone is not fault qualification."
"LAYOUT","2.3","Complete Rev1 routing and RF / power / mechanical review","10","2026-11-23T09:00","2026-12-04T17:00","true","-1","PCB / EE / RF","SCHCLOSE POWERBOUND","Layout review checks switcher hot loops, return paths, antenna keep-outs/feed/matching, GNSS isolation, debug/test access, thermal copper, USB, pigtail, button/LED alignment, board outline and tolerances. DRC and 3D clearance review pass."
"R1DFM","2.4","Rev1 PCBA DFM, AVL availability and release package","5","2026-12-07T09:00","2026-12-11T17:00","true","-1","Electrical / CM","LAYOUT SUPPLY","CM acknowledges controlled fabrication/assembly package, stackup, impedance, stencil, polarity, firmware/debug access, approved substitutions, DNP variants and long-lead material status. Do not treat old exports as current production files."
"R1REL","2.5","G1 - Release Rev1 PCBA prototype run","0","2026-12-11T17:00","2026-12-11T17:00","true","-1","Electrical lead","R1DFM","Signed Rev1 build release; quote and proposed lot approved; Rev1 is an engineering prototype with fault-test restrictions documented."
"MEARCH","2.6","Design clamshell and interfaces for prototype manufacture","10","2026-11-09T09:00","2026-11-20T17:00","false","17","Mechanical lead","SCOPE","Two plastic shell halves; fastening/seal strategy, wall/rib/draft and tool parting concept. USB access/sealing, power pigtail strain-relief and pull load path, user button/RGB light path, ESP32 reset/boot and nRF reset access, mounting and antenna clearances are defined."
"VENTSELECT","2.7","Select humidity vent and MEMS acoustic membrane stacks","10","2026-11-09T09:00","2026-11-20T17:00","false","17","ME / sensor / supplier","SCOPE","Evaluate ePTFE humidity exchange and acoustic vent separately: RH response, mic insertion loss/bandwidth, cavity geometry, adhesives, supported bond land, contamination/condensation, grill/screen protection and material compatibility. Sharing a port requires evidence; vent rating is not whole-product IP certification."
"PRINTS","2.8","Print housing variants and hand-build membrane/grill/pigtail prototypes","10","2026-11-23T09:00","2026-12-04T17:00","false","17","Mechanical / prototype shop","MEARCH VENTSELECT","Printed shell fits and hand-applied ePTFE, screen/grill, light pipe, seals and strain relief available; build record captures orientation/material/adhesive/cure. Include vent-only coupons and cable pull fixtures."
"PROTOME","2.9","Evaluate printed enclosure fit, acoustic/RH and cable interfaces","5","2026-12-07T09:00","2026-12-11T17:00","false","17","Mechanical / test","PRINTS LAYOUT","Fit real board or verified dimensional surrogate; test button/LED/dev access, USB insertion, pigtail pull/bend, grille damage, mic response/RH lag and condensation. Printed/handmade performance is screening evidence, not molded-process qualification."
"P2","3","03 - Rev1 EVT build and integrated learning","46","2026-11-18T09:00","2027-01-29T17:00","true","-2","","",""
"R1BUILD","3.1","Fabricate and assemble Rev1 engineering boards","15","2026-12-14T09:00","2027-01-04T17:00","true","-1","PCBA supplier","R1REL LOTPLAN","CM assembly report, AOI/X-ray where appropriate, component traceability, serial numbers and approved substitutions; staged release of first boards if feasible."
"R1SHIP","3.2","Rev1 board shipment, import and incoming inspection","5","2027-01-05T09:00","2027-01-09T17:00","true","-2","Operations / quality","R1BUILD","Air shipment received with customs paperwork, count and visual inspection; shipping damage and build discrepancies logged."
"SWREV1","3.3","External gate - Rev1 bring-up firmware and diagnostic tools","15","2026-11-18T09:00","2026-12-08T17:00","false","15","ESP32 / nRF / tools leads","SCHCLOSE","Versioned Rev1 pin map, flash/storage change, sensor addressing, charger source policy, USB-only latch-off recovery, rail sequencing/back-power prevention, fuel-gauge configuration and diagnostic capture ready. Dashboard/carportpy/proto compatible. Deliverables managed in software backlogs."
"R1BRING","3.4","Bring up Rev1 PCBA with current-limited staged power","5","2027-01-11T09:00","2027-01-15T17:00","true","-1","Electrical / firmware","R1SHIP SWREV1","Supply currents/rails verified before radios; USB enumeration, debug recovery, sensor/mic/button/RGB, flash, reset/boot and UART tested. Record boot firmware, serial and measurement setup."
"R1POWER","3.5","Rev1 power, input fault screening and radio transient tests","10","2027-01-18T09:00","2027-01-29T17:00","true","-1","Electrical / test","R1BRING POWERBOUND","Measure reverse/positive stress within declared envelope, brownout and crank recovery, USB-only/battery absent/depleted modes, charge/source limits after reset, 3.2 V radio droop, thermal/efficiency and sleep draw; no unresolved unsafe stress. Destructive tests use allocated units."
"R1RF","3.6","Rev1 antenna, coexistence and EMC pre-scan","10","2027-01-18T09:00","2027-01-29T17:00","true","-1","RF / compliance lab","R1BRING PROTOME","In representative enclosure/cabling, assess BLE/Wi-Fi/cellular transmit and GNSS receive sensitivity/TTFF, coexistence/desense and switcher noise; bench/conducted checks plus radiated pre-scan; antenna candidates, retuning needs and lab modes documented."
"R1SENSE","3.7","Rev1 integrated membrane, housing and sensor experiments","10","2027-01-18T09:00","2027-01-29T17:00","true","-1","Mechanical / sensor test","R1BRING PROTOME","RH step response/hysteresis, thermal self-heating, acoustic response/noise, condensation/ingress screening and cable pull/bend. Confirm antenna placement, button feel/light visibility and development button access on actual assembly."
"R1EVT","3.8","G2 - Rev1 EVT findings and Rev2 change list approved","0","2027-01-29T17:00","2027-01-29T17:00","true","-1","EE / ME / program","R1POWER R1RF R1SENSE G0","Issue log contains root cause, severity, evidence and Rev2 disposition; power/RF/mechanical feasibility demonstrated. No automatic pass because boards powered up."
"P3","4","04 - Rev2 and tool-ready design freeze","20","2027-01-29T17:00","2027-03-01T17:00","true","-1","","",""
"CONNECTDEC","4.1","G3a - Cellular SIM and satellite launch decision","0","2027-01-29T17:00","2027-01-29T17:00","true","-1","Product / connectivity / compliance","SIMPILOT NTNEVAL R1EVT","Select provider/form factor and antenna/band plan. NTN either included with supported build/firmware/service and certification budget, or deferred with feature disabled and excluded from launch claims. Unresolved NTN requirement holds Rev2 freeze; no implicit terrestrial-only waiver."
"R2SCHEM","4.2","Rev2 electrical changes, worst-case closure and schematic review","10","2027-02-01T09:00","2027-02-12T17:00","true","-1","Electrical lead","R1EVT CONNECTDEC","Rev2 closes EVT defects, input protection and power margins, selected connectivity/SIM, release variant and test access; tolerance/temperature/DC bias calculations, reviewed schematic and BOM signed."
"R2LAYOUT","4.3","Rev2 layout, RF and DFM review","10","2027-02-16T09:00","2027-03-01T17:00","true","-1","PCB / RF / CM","R2SCHEM","Production-intent outline, stackup, antenna matching/keep-outs, switcher layout, cable interfaces and fixtures reviewed; DRC/ERC and CM DFM accepted. No speculative changes after freeze without ECO."
"MEDFM","4.4","Tool-ready enclosure, vent process and cable assembly DFM","10","2027-02-01T09:00","2027-02-12T17:00","false","4","ME / mold supplier","R1EVT CONNECTDEC","Production resin, surface/texture, shrink/tolerances, fastening, draft/parting/ejection, undercuts, gasket, pigtail molding or grommet strategy, USB sealing, membrane bond lands and grill process finalized. Humidity and acoustic stack validated; tooling scope includes any separate strain-relief/insert tools."
"FMEA","4.5","Cross-discipline design risk and verification review","5","2027-02-16T09:00","2027-02-22T17:00","false","4","Quality / EE / ME","R2SCHEM MEDFM","DFMEA and DVP&R link failures to tests: water paths, membrane detachment/blockage, cable pull, user interface, thermal, battery, radio, vehicle transients and recovery; test severities and quantitative pass limits signed before formal runs."
"TOOLQUOTE","4.6","Approve mold design, tooling contract and trial plan","5","2027-02-22T09:00","2027-02-26T17:00","true","0","ME / sourcing","MEDFM SUPPLY","Supplier confirms T1/T2 definitions, cavities, tool steel/life/ownership, resin, inspection points, trial videos/data, samples, ECO turnaround, capacity, shipping and holiday calendar. Texture/irreversible steel changes held until fit acceptance."
"FREEZE","4.7","G3 - Release Rev2 PCBA and housing tooling","0","2027-03-01T17:00","2027-03-01T17:00","true","-1","EE / ME / program","R2LAYOUT TOOLQUOTE FMEA LABPLAN","Controlled Rev2 electrical and mechanical release and PO approval. Freeze intended antennas, cables, resin, SIM/service scope and certification configuration. Long-lead commitments explicitly approved by operator."
"P4","5","05 - Rev2 / T1 first molded integration","33","2027-03-02T09:00","2027-04-16T17:00","true","-3","","",""
"R2BUILD","5.1","Build Rev2 production-intent boards","15","2027-03-02T09:00","2027-03-22T17:00","true","-1","PCBA supplier","FREEZE","Controlled Rev2 lot with serial/lot traceability, inspection and approved exact BOM; proposed 30 boards sized to qualification plan."
"R2SHIP","5.2","Ship and inspect Rev2 boards","5","2027-03-23T09:00","2027-03-27T17:00","true","-3","Operations / quality","R2BUILD","Received boards match released configuration and allocation; incoming results logged."
"SWDVT","5.3","External gate - Rev2 DVT and RF test firmware","15","2027-03-02T09:00","2027-03-22T17:00","false","2","Firmware / shared / dashboard leads","FREEZE","Pinned ESP32/nRF/modem/NCS versions, Rev2 hardware profile, production-intent power policy, logging and RF test modes; shared contracts/protobuf and dashboard/carportpy compatibility matrix. NTN launch decision implemented. Separate software backlog owns development."
"R2BRING","5.4","Rev2 incoming bring-up and early lab sample release","2","2027-03-29T09:00","2027-03-30T17:00","true","-1","Electrical / firmware / compliance","R2SHIP SWDVT","Current-limited power-up, basic rails/current/USB/debug/radio checks pass; traceable Rev2 units, firmware, cables and declared electrical envelope released to parallel lab work. Printed shell and hand-cut screen/ePTFE permitted for tests whose results do not depend on final materials/process. Full fix verification continues on separate allocated units."
"R2VERIFY","5.5","Complete Rev2 electrical fix verification alongside lab testing","8","2027-03-31T09:00","2027-04-09T17:00","true","-1","Electrical / firmware / RF","R2BRING","Repeat affected power/fault tests, flash/debug recovery, supply margin and radio/sensor checks; compare Rev1 findings and confirm final component variants. Newly discovered Rev3 requirement is an ECO and schedule replan, not hidden rework."
"T1CUT","5.6","T1 - Cut clamshell and included strain-relief tooling","20","2027-03-02T09:00","2027-03-29T17:00","true","-1","Mold supplier","FREEZE","Mold progress evidence and tool acceptance checkpoints; approved resin and inserts available. This is 20 supplier working days, excluding provisional closure; no claim that all overseas vendors meet it."
"T1TRIAL","5.7","T1 - First shots, supplier metrology and assembly samples","5","2027-03-30T09:00","2027-04-05T17:00","true","-1","Mold / assembly supplier","T1CUT","As-molded samples from intended resin, cavity IDs, molding parameters, dimensional FAI and cosmetic/warp/sink observations; fit PCB and pigtail locally before sending samples. Proposed 20 sets plus membrane coupons."
"T1SHIP","5.8","T1 - Air shipment and incoming sample inspection","5","2027-04-06T09:00","2027-04-10T17:00","true","-2","Operations / quality","T1TRIAL","Samples and FAI received with revision/cavity traceability; retain supplier reference set."
"T1EVAL","5.9","T1 - Mechanical and electrical assembly evaluation","5","2027-04-12T09:00","2027-04-16T17:00","true","-1","ME / EE / test","T1SHIP R2VERIFY","Evaluate tolerances, fasteners, seam/USB/pigtail, pull/bend, button/RGB/dev access, vent/grill assembly, mic/RH and final antenna behavior with Rev2. Collect change list before tool correction release; first molded parts are not preproduction approval."
"T1GATE","5.10","G4 - T1 integrated evaluation and correction list accepted","0","2027-04-16T17:00","2027-04-16T17:00","true","-1","ME / EE / quality","T1EVAL","T1 loop target 6-8 weeks after freeze without supplier closure; baseline uses 20 + 5 supplier workdays, 5 calendar days transit and 5 engineering workdays evaluation. Electrical availability may drive later finish; holiday impact is explicit in supplier calendar."
"PRECOMP","5.11","Rev2 EMC / RF readiness pre-scan using prototype housing","10","2027-03-31T09:00","2027-04-13T17:00","false","2","RF / compliance lab","R2BRING PROTOME LABBOOK","Use Rev2 boards with printed housing, intended antennas/cables and documented handmade screen/ePTFE for early emissions/coexistence/GNSS scans. Track limitations; this pre-scan does not certify molded resin, final bonding/seal or antenna/mechanical equivalence. T1 lab sample release confirms representative setup before formal radiated work."
"P5","6","06 - T2 correction and preproduction validation","33","2027-04-19T09:00","2027-06-03T17:00","true","-1","","",""
"T2ECO","6.1","Freeze T2 correction package and final test limits","5","2027-04-19T09:00","2027-04-23T17:00","true","-1","EE / ME / quality","T1GATE PRECOMP","Signed tool/assembly correction list and required electrical ECO. Baseline assumes minor corrections, no PCB respin or new mold. Major changes trigger explicit additional loop and renewed certification impact review."
"T2FIX","6.2","T2 - Tool corrections and process adjustments","10","2027-04-26T09:00","2027-05-12T17:00","true","-1","Mold / assembly supplier","T2ECO","Steel-safe corrections, approved finish/texture, vent application fixture and cure, grill retention, cable strain relief and sealing process incorporated; updated controlled drawing and inspection plan."
"T2TRIAL","6.3","T2 - Repeat trial and supplier first-article inspection","2","2027-05-13T09:00","2027-05-14T17:00","true","-1","Mold supplier / operations","T2FIX","Final resin/cavity/process samples and dimensional FAI accepted for dispatch; proposed 60 assemblies covers lab/qualification plus spares. Supplier trial uses factory working days, with no assumed weekend overtime."
"T2SHIP","6.4","T2 - Air shipment and incoming inspection","5","2027-05-15T09:00","2027-05-19T17:00","true","-1","Operations / quality","T2TRIAL","Final T2 samples and FAI received with revision/cavity/lot traceability; incoming damage/count checks complete."
"T2EVAL","6.5","T2 - Integrated mechanical and electrical evaluation","10","2027-05-20T09:00","2027-06-03T17:00","true","-1","ME / EE / quality","T2SHIP","Repeat affected dimensional, sealing/cable, thermal, mic/RH, RF/GNSS and power tests. Final resin/adhesive/cable/antenna/PCB/firmware configuration logged. Manufacturing repeatability compared across cavities/builds."
"T2GATE","6.6","G5 - T2 preproduction candidate accepted","0","2027-06-03T17:00","2027-06-03T17:00","true","-1","EE / ME / program","T2EVAL","T2 loop target 4-6 weeks from correction release: 10 supplier workdays correction + 2 supplier workdays trial + 5 calendar days shipping + 10 engineering workdays evaluation. Candidate accepted for preproduction; Rev2/T1 formal campaigns are already running. T2 configuration and process changes enter explicit qualification delta review before market release."
"P6","7","07 - Rev2 / T1 qualification in parallel with T2 tooling","79","2027-03-02T09:00","2027-06-22T17:00","false","6","","",""
"LABBOOK","7.1","Confirm lab bookings, sample matrix and regulatory configuration","5","2027-03-02T09:00","2027-03-08T17:00","false","17","Compliance lead","FREEZE LABPLAN","Quote/confirm staggered lab slots: Rev2 arrival/quick bring-up for electrical and conducted work, T1 molded samples for enclosure-sensitive work, and a T2 delta window. Document grant IDs, antennas, firmware/RF modes, cable/pack variants, representative sample agreement, test allocation and change policy. Schedule is not evidence a booking already exists."
"LABSAMPLE","7.2","Accept representative T1 assemblies for formal lab work","2","2027-04-19T09:00","2027-04-20T17:00","false","7","Compliance / ME / accredited lab","T1GATE LABBOOK PRECOMP","Lab signs sample/configuration matrix: molded production-intent resin, antenna location/cables, fastening, pigtail/grill and ePTFE/adhesive stack with recorded dimensions/process. Hand-cut/applied parts can be accepted when they represent the intended controlled assembly method; printed materials do not establish molded enclosure qualification. Nonrepresentative items remain provisional and trigger affected T2 tests; no assumption that T1 is already equivalent."
"QUALPOWER","7.3","Rev2 vehicle power qualification - prototype housing allowed","10","2027-03-31T09:00","2027-04-13T17:00","false","37","Electrical / accredited test lab","R2BRING LABBOOK","Run signed ISO 7637-2 / ISO 16750-2 electrical tests as scoped, reverse battery, crank, jump start, load dump, hot plug, shorts and USB/source combinations on traceable Rev2 with representative harness/pack/load and firmware. Printed housing is acceptable only where the lab records that enclosure/thermal/mounting effects cannot invalidate results. Board/port ESD may start; final accessible-assembly ESD is a separate T1 task. Verify recovery/leakage; no blanket automotive-certified claim."
"QUALASSEMBLY","7.4","T1 accessible-assembly ESD and enclosed thermal confirmation","5","2027-04-21T09:00","2027-04-27T17:00","false","32","Electrical / ME / accredited lab","LABSAMPLE QUALPOWER","Complete enclosure-dependent accessible-point ESD, USB/pigtail/button/seam discharge paths and worst-case enclosed thermal/radio-load checks on representative T1. Cross-reference early Rev2 power results; repeat affected tests where T1 grounding, mounting, heat flow or wiring differs. Final T2 changes require delta review."
"QUALENV","7.5","T1 enclosure, environmental and cable qualification","20","2027-04-21T09:00","2027-05-18T17:00","false","17","ME / reliability lab","LABSAMPLE","Run approved environmental/cable/membrane DVP&R on lab-accepted production-intent molded T1 assemblies: temperature/humidity/condensation/cycles, vibration/shock/drop, ingress target, scoped fluid/UV, pull/flex and connector/button life. Measure acoustic/RH response and bonding/grill performance before/after. Record controlled hand-assembly method where representative; substitute material or process results are provisional. T2 delta review determines repeats; long-duration aging adds explicit time."
"FCCIC","7.6","T1 US FCC / Canada ISED host RF, emissions and exposure assessment","30","2027-04-21T09:00","2027-06-02T17:00","false","7","Compliance / accredited lab / TCB-CB","LABSAMPLE SWDVT","Test/assess lab-accepted representative Rev2/T1 configuration against applicable rules and module grant restrictions, antenna gains/bands, simultaneous transmit modes, RF exposure and host emissions. Formal radiated results require representative mechanics; printed parts alone do not establish final conformity. Obtain reports/filing-route conclusion; final applicability to T2 is decided at explicit delta gate."
"CELLAPPROVE","7.7","Rev2 cellular/operator and conditional NTN conducted / protocol campaign","20","2027-03-31T09:00","2027-04-27T17:00","false","22","Connectivity / certification lab","R2BRING CONNECTDEC LABBOOK","Begin applicable PTCRB/IoT/operator route on verified Rev2 and selected module/modem/NCS/SIM/provider: conducted RF, network/protocol, provisioning and SIM lifecycle work that does not require final enclosure. Printed housing may support bench work with lab agreement. OTA/antenna-dependent acceptance follows on T1; include conditional NTN service tests or documented disabled feature scope."
"CELLFINAL","7.8","T1 cellular OTA / antenna and provider acceptance completion","10","2027-04-28T09:00","2027-05-11T17:00","false","22","Connectivity / certification lab","CELLAPPROVE LABSAMPLE","Complete required antenna/OTA and selected-carrier/provider acceptance on representative Rev2/T1 assembly, incorporating early conducted/protocol results. NTN approval evidence is included if selected. Record exact accepted hardware/firmware/antenna configuration; T2 changes are checked at the delta gate."
"BTSIG","7.9","Complete Bluetooth product qualification","10","2027-03-31T09:00","2027-04-13T17:00","false","42","Compliance / Bluetooth member owner","R2BRING SWDVT","Company membership, qualified-design reuse/testing route, product identity and submission complete; retain product qualification record before market distribution."
"BATT","7.10","Battery, transport, material and product safety documentation","15","2027-03-09T09:00","2027-03-30T17:00","false","52","Safety / sourcing / compliance","FREEZE LABBOOK","Confirm actual cell/pack chemistry/configuration and applicable safety evaluation, protection/charging temperature behavior; UN 38.3 test summary for shipped lithium configuration and packaging requirements where applicable, supplier safety files, resin flammability and material declarations. New/modified pack testing requires a separate quoted loop; module approvals do not cover this."
"QUALDELTA","7.11","T2 change-impact review and qualification carry-forward decision","3","2027-06-04T09:00","2027-06-08T17:00","false","6","Compliance / accredited lab / EE / ME / quality","T2GATE FCCIC CELLFINAL QUALPOWER QUALASSEMBLY QUALENV BTSIG BATT","Compare tested Rev2/T1 and final T2 BOM, PCB, antennas/matching, firmware/radio limits, resin/texture, geometry/seals, adhesive/membrane/grill, cable and assembly process. Lab/quality approve which reports carry forward and list affected tests/filings/acceptances for repetition; no automatic certificate transfer. Minor repeats use the visible reserve; major changes extend schedule. Release remains blocked until final configuration is covered."
"REGDOC","7.12","Prepare labels, installation instructions and compliance file","10","2027-06-03T09:00","2027-06-16T17:00","false","10","Compliance / technical writing","FCCIC CELLFINAL BTSIG BATT","Prepare applicable US/Canada IDs/labels and Canadian bilingual notices as required, antenna/install separation, approved operating environment/power/accessories and provider scope. Reference Rev2/T1 reports and update to final T2 after delta/retest; final document approval occurs at G6. Expansion markets require fresh assessment."
"RETESTBUF","7.13","T2 delta retests / lab confirmation reserve","10","2027-06-09T09:00","2027-06-22T17:00","false","6","Program / lab","QUALDELTA","Reserve one minor affected-test/retest campaign and lab confirmation for final T2, including report/filing/operator acceptance and documentation updates. Lab-approved equivalence may reduce consumed reserve; no blanket acceptance of substitute housings/materials. Major hardware/antenna/resin/battery/NTN changes require an explicit longer loop; all affected tests must close before G6."
"MARKET","7.14","G6 - Qualification and US/Canada release evidence accepted","0","2027-06-22T17:00","2027-06-22T17:00","false","6","Compliance / quality / program","REGDOC RETESTBUF BTSIG T2GATE","Signed qualification reports and required authorizations/acceptances cover the exact final T2 sale configuration. T2 delta disposition and affected retests closed, final labels/manuals approved, and NTN inclusion/deferment explicit before customer distribution. Earlier Rev2/T1 results are carried forward only with documented lab/quality agreement."
"P7","8","08 - Manufacturing system and software handoff gates","85","2027-03-02T09:00","2027-07-02T09:00","true","-1","","",""
"FIXDES","8.1","Design production programming and end-of-line fixtures","10","2027-03-02T09:00","2027-03-15T17:00","false","45","Test engineering / CM","FREEZE LOTPLAN","Fixture design covers protected power, contact access, ESP32 USB/UART and nRF SWD/modem programming, serial/MAC/IMEI/SIM association, rail/current tests, radio/GNSS checks, sensor/mic/RH, buttons/RGB and leak/vent tests where appropriate. Throughput and calibration/reference strategy defined."
"FIXBUILD","8.2","Build and correlate fixtures with golden/reference units","15","2027-04-12T09:00","2027-04-30T17:00","false","30","Test engineering / CM","FIXDES R2VERIFY","Fixtures delivered, limits derived from qualification, reference/failing-unit studies demonstrate detection, gauge repeatability assessed and station/firmware logs retained. Destructive qualification and end-of-line screens have distinct coverage."
"SWFACT","8.3","External gate - Factory firmware, provisioning and test tools","20","2027-03-23T09:00","2027-04-20T17:00","false","40","Firmware / shared / tools / AWS leads","SWDVT FIXDES","Versioned manufacturing images, RF test modes, locked test protocols, fixture automation/dashboard diagnostics, protected factory identity flow, authorized provisioning and serial/IMEI/SIM records; pass/fail output schema and calibration persistence. No private keys or credentials in build package/logs."
"SWPRODUCT","8.4","External gate - Integrated product release candidate","30","2027-03-23T09:00","2027-05-04T17:00","false","40","Software release lead","SWDVT CONNECTDEC","Versioned ESP32/nRF/shared/protobuf, mobile tools/onboarding/OTA, dashboard and AWS contracts pass cross-repo integration: cellular/Wi-Fi/BLE paths, location, recording/relay, secure ownership, updates, factory reset/calibration retention, recovery and low power. Feature maturity is not inferred from README. Separate software project manages scope and iterations."
"SOP","8.5","Create assembly SOPs, quality control and training package","10","2027-06-04T09:00","2027-06-17T17:00","false","9","Manufacturing / quality","T2GATE FIXBUILD SWFACT","Work instructions for membrane cleanliness/bond/cure, grill/screen retention, torque, seals/pigtail/USB, ESD/rework and traceability; incoming/supplier quality, PFMEA/control plan, calibration, first-article approval and operator training. Golden unit and tooling/fixture backups retained."
"MATERIAL","8.6","Approve production material availability and logistics plan","20","2027-06-04T09:00","2027-07-01T17:00","true","-1","Sourcing / operations","T2GATE SUPPLY CONNECTDEC","Approved AVL, alternatives via ECO, allocation and forecast for radios/SIMs/antenna/resin/ePTFE/adhesive/cable/battery; no speculative full MP purchase. Pilot materials authorized; freight/customs/battery transport plan and supplier change notifications defined."
"PVTREADY","8.7","G7 - Controlled pilot build readiness","0","2027-07-02T09:00","2027-07-02T09:00","true","0","Manufacturing / quality / software","SOP MATERIAL FIXBUILD SWFACT SWPRODUCT MARKET","Released exact hardware/firmware/BOM/work instructions, calibrated validated test stations, material, required compliance evidence and trained operators. Approve proposed PVT lot and quality targets before build."
"P8","9","09 - Pilot, production release and ramp","57","2027-07-02T09:00","2027-09-22T17:00","true","0","","",""
"PVTBUILD","9.1","Run PVT pilot on intended overseas production line","10","2027-07-02T09:00","2027-07-15T17:00","true","0","CM / quality","PVTREADY","Suggested 100-unit lot uses intended staff, tools, resin/process and end-of-line tests. Record first-pass yield, defects/rework, cycle time, cavity/lot/serial traceability and process capability where sample size supports it; retain golden/reference units."
"PVTSHIP","9.2","Ship pilot units and verify receiving / fulfillment process","5","2027-07-16T09:00","2027-07-20T17:00","true","0","Operations / quality","PVTBUILD","Pilot import, packaging, handling and shipment records verified; random receiving audit matches station records and serial/SIM identities."
"PILOTFIELD","9.3","Supervised US/Canada vehicle pilot and soak","15","2027-07-21T09:00","2027-08-11T17:00","true","0","System test / field operations","PVTSHIP","Representative vehicles/installations and routes exercise cellular/GNSS/Wi-Fi/BLE, power/crank/sleep, heat/condensation, onboarding/OTA/recovery and optional approved NTN; retain logs with consent. Three weeks is a discovery pilot, not lifetime reliability proof."
"PVTCLOSE","9.4","Close pilot defects and approve yield / quality evidence","5","2027-08-12T09:00","2027-08-18T17:00","true","0","Quality / EE / ME / software","PILOTFIELD","Critical/major issues closed with retest and ECO impact assessment; baseline proposed targets >=95% first-pass yield, 100% functional screen pass before ship and zero unresolved critical defects require owner approval. Verify RMA/repair/OTA support and traceability."
"MPREL","9.5","G8 - Authorize mass production release","0","2027-08-18T17:00","2027-08-18T17:00","true","0","Program / quality / operations","PVTCLOSE MARKET","Operator approves production quantity/PO against demand, cash, capacity and accepted quality. Qualified configuration and golden sample locked; change control, stop-ship and field monitoring owners assigned."
"MPBUILD","9.6","Build first mass-production lot and controlled ramp","20","2027-08-19T09:00","2027-09-15T17:00","true","0","CM / operations / quality","MPREL","Size of first MP lot set at G8; control plan, sampling/audit, complete serialized test records, yield monitoring and supplier capacity demonstrated; hold nonconforming units."
"MPAUDIT","9.7","First MP lot outgoing audit and shipment release","5","2027-09-16T09:00","2027-09-22T17:00","true","0","Quality / operations","MPBUILD","Outgoing functional/visual/packaging audit and documentation pass, approved labels/manuals/certification configuration checked; ship only released units with traceability and support readiness."
"MP","9.8","G9 - First mass-production lot ready to ship","0","2027-09-22T17:00","2027-09-22T17:00","true","0","Program lead","MPAUDIT","First MP lot accepted and released for shipment; subsequent ramp managed by yield, demand and field performance. Freight to customer is outside this ready-to-ship milestone."
